# MIDRISE-42

Schedule from Primavera P6, 2026-03-02 to 2026-11-06, data date 2026-04-01, A marks actual dates.

## Schedule

| ID | WBS | Activity | Type | Duration | Start | Finish | Predecessors | Planned start | Planned finish | Total float | Constraint |
| --- | --- | --- | --- | --- | --- | --- | --- | --- | --- | --- | --- |
|  | CLOSEOUT | **Closeout** |  |  | 2026-08-27 | 2026-11-06 |  |  |  |  |  |
| A2510 |  | Elevator inspection |  | 3d | 2026-08-27 | 2026-08-30 | A1540, A1700 | 2026-08-24 | 2026-08-27 | 53d | start on |
| A2500 |  | Fire alarm and life safety test |  | 5d | 2026-10-17 | 2026-10-22 | A1850, A1950, A2050, A2150, A1700 | 2026-10-14 | 2026-10-19 | 0d |  |
| A2520 |  | Final building inspections |  | 5d | 2026-10-22 | 2026-10-27 | A2500, A2510, A1430 | 2026-10-19 | 2026-10-24 | 0d |  |
| A2530 |  | Certificate of occupancy |  | 5d | 2026-10-27 | 2026-11-01 | A2520 | 2026-10-24 | 2026-10-29 | 5d |  |
| A2540 |  | Punch list |  | 10d | 2026-10-27 | 2026-11-06 | A2520 | 2026-10-24 | 2026-11-03 | 0d |  |
| A2550 |  | Turnover to owner | milestone | 0d | 2026-11-06 | 2026-11-06 | A2530, A2540 | 2026-11-03 | 2026-11-03 | 0d |  |
|  | ENVELOPE | **Envelope** |  |  | 2026-06-13 | 2026-08-31 |  |  |  |  |  |
| A1400 |  | Windows, levels 2-3 |  | 10d | 2026-06-13 | 2026-06-23 | A1320 | 2026-06-10 | 2026-06-20 | 0d |  |
| A1410 |  | Windows, levels 4-5 |  | 10d | 2026-07-07 | 2026-07-17 | A1340, A1400 | 2026-07-04 | 2026-07-14 | 23d |  |
| A1420 |  | Sheathing and weather barrier |  | 15d | 2026-07-17 | 2026-08-01 | A1410 | 2026-07-14 | 2026-07-29 | 23d |  |
| A1430 |  | Exterior cladding |  | 25d | 2026-08-01 | 2026-08-26 | A1420 | 2026-07-29 | 2026-08-23 | 57d |  |
| A1440 |  | Exterior building signage |  | 5d | 2026-08-26 | 2026-08-31 | A1430 | 2026-08-23 | 2026-08-28 | 67d |  |
|  | FOUNDATIONS | **Foundations** |  |  | 2026-04-06 | 2026-05-05 |  |  |  |  |  |
| A1200 |  | Footings |  | 8d | 2026-04-06 | 2026-04-14 | A1130 | 2026-04-03 | 2026-04-11 | 0d |  |
| A1210 |  | Foundation walls |  | 10d | 2026-04-14 | 2026-04-24 | A1200 | 2026-04-11 | 2026-04-21 | 0d |  |
| A1220 |  | Underslab plumbing and electrical |  | 6d | 2026-04-24 | 2026-04-30 | A1210 | 2026-04-21 | 2026-04-27 | 0d |  |
| A1230 |  | Slab on grade |  | 5d | 2026-04-30 | 2026-05-05 | A1220 | 2026-04-27 | 2026-05-02 | 0d |  |
|  | INTERIORS | **Interiors** |  |  | 2026-08-01 | 2026-10-17 |  |  |  |  |  |
| A1800 |  | Insulation and inspection, level 2 |  | 5d | 2026-08-01 | 2026-08-06 | A1640, A1420 | 2026-07-29 | 2026-08-03 | 23d |  |
| A1900 |  | Insulation and inspection, level 3 |  | 5d | 2026-08-01 | 2026-08-06 | A1650, A1420 | 2026-07-29 | 2026-08-03 | 23d |  |
| A1810 |  | Drywall hang and finish, level 2 |  | 15d | 2026-08-06 | 2026-08-21 | A1800 | 2026-08-03 | 2026-08-18 | 23d |  |
| A1910 |  | Drywall hang and finish, level 3 |  | 15d | 2026-08-06 | 2026-08-21 | A1900 | 2026-08-03 | 2026-08-18 | 23d |  |
| A2000 |  | Insulation and inspection, level 4 |  | 5d | 2026-08-09 | 2026-08-14 | A1660, A1420 | 2026-08-06 | 2026-08-11 | 15d |  |
| A2010 |  | Drywall hang and finish, level 4 |  | 15d | 2026-08-14 | 2026-08-29 | A2000 | 2026-08-11 | 2026-08-26 | 15d |  |
| A1820 |  | Paint, level 2 |  | 8d | 2026-08-21 | 2026-08-29 | A1810 | 2026-08-18 | 2026-08-26 | 23d |  |
| A1920 |  | Paint, level 3 |  | 8d | 2026-08-21 | 2026-08-29 | A1910 | 2026-08-18 | 2026-08-26 | 23d |  |
| A2100 |  | Insulation and inspection, level 5 |  | 5d | 2026-08-24 | 2026-08-29 | A1670, A1420 | 2026-08-21 | 2026-08-26 | 0d |  |
| A1830 |  | Cabinets and countertops, level 2 |  | 10d | 2026-08-29 | 2026-09-08 | A1820 | 2026-08-26 | 2026-09-05 | 23d |  |
| A1930 |  | Cabinets and countertops, level 3 |  | 10d | 2026-08-29 | 2026-09-08 | A1920 | 2026-08-26 | 2026-09-05 | 23d |  |
| A2020 |  | Paint, level 4 |  | 8d | 2026-08-29 | 2026-09-06 | A2010 | 2026-08-26 | 2026-09-03 | 15d |  |
| A2110 |  | Drywall hang and finish, level 5 |  | 15d | 2026-08-29 | 2026-09-13 | A2100 | 2026-08-26 | 2026-09-10 | 0d |  |
| A2030 |  | Cabinets and countertops, level 4 |  | 10d | 2026-09-06 | 2026-09-16 | A2020 | 2026-09-03 | 2026-09-13 | 15d |  |
| A1840 |  | Flooring, level 2 |  | 8d | 2026-09-08 | 2026-09-16 | A1830 | 2026-09-05 | 2026-09-13 | 23d |  |
| A1940 |  | Flooring, level 3 |  | 8d | 2026-09-08 | 2026-09-16 | A1930 | 2026-09-05 | 2026-09-13 | 23d |  |
| A2120 |  | Paint, level 5 |  | 8d | 2026-09-13 | 2026-09-21 | A2110 | 2026-09-10 | 2026-09-18 | 0d |  |
| A1850 |  | MEP trim and fixtures, level 2 |  | 8d | 2026-09-16 | 2026-09-24 | A1840 | 2026-09-13 | 2026-09-21 | 23d |  |
| A1950 |  | MEP trim and fixtures, level 3 |  | 8d | 2026-09-16 | 2026-09-24 | A1940 | 2026-09-13 | 2026-09-21 | 23d |  |
| A2040 |  | Flooring, level 4 |  | 8d | 2026-09-16 | 2026-09-24 | A2030 | 2026-09-13 | 2026-09-21 | 15d |  |
| A2130 |  | Cabinets and countertops, level 5 |  | 10d | 2026-09-21 | 2026-10-01 | A2120 | 2026-09-18 | 2026-09-28 | 0d |  |
| A2050 |  | MEP trim and fixtures, level 4 |  | 8d | 2026-09-24 | 2026-10-02 | A2040 | 2026-09-21 | 2026-09-29 | 15d |  |
| A2140 |  | Flooring, level 5 |  | 8d | 2026-10-01 | 2026-10-09 | A2130 | 2026-09-28 | 2026-10-06 | 0d |  |
| A2150 |  | MEP trim and fixtures, level 5 |  | 8d | 2026-10-09 | 2026-10-17 | A2140 | 2026-10-06 | 2026-10-14 | 0d |  |

| ID | WBS | Activity | Type | Duration | Start | Finish | Predecessors | Complete | Remaining | Planned start | Planned finish | Total float |
| --- | --- | --- | --- | --- | --- | --- | --- | --- | --- | --- | --- | --- |
|  | LONG-LEAD EQ | **Long-lead equipment** |  |  | 2026-03-02 | 2026-08-27 |  |  |  |  |  |  |
| A1500 |  | Switchgear submittal and approval |  | 15d | 2026-03-02 A | 2026-03-17 A | A1000 | 100% |  |  |  |  |
| A1520 |  | Elevator submittal and approval |  | 20d | 2026-03-02 A | 2026-03-22 A | A1000 | 100% |  |  |  |  |
| A1510 |  | Switchgear fabrication and delivery |  | 70d | 2026-03-17 A | 2026-05-26 | A1500 | 21% | 55d |  |  | 139d |
| A1530 |  | Elevator fabrication |  | 90d | 2026-03-22 A | 2026-06-20 | A1520 | 11% | 80d |  |  | 101d |
| A1540 |  | Elevator installation |  | 20d | 2026-07-25 | 2026-08-14 | A1530, A1360 |  |  | 2026-07-22 | 2026-08-11 | 66d |
| A1700 |  | Permanent power energized |  | 5d | 2026-08-22 | 2026-08-27 | A1510, A1630 |  |  | 2026-08-19 | 2026-08-24 | 51d |
|  | MEP ROUGH-IN | **MEP rough-in** |  |  | 2026-06-23 | 2026-08-24 |  |  |  |  |  |  |
| A1600 |  | MEP rough-in, level 2 |  | 15d | 2026-06-23 | 2026-07-08 | A1320, A1400 |  |  | 2026-06-20 | 2026-07-05 | 0d |
| A1610 |  | MEP rough-in, level 3 |  | 15d | 2026-07-08 | 2026-07-23 | A1330, A1600 |  |  | 2026-07-05 | 2026-07-20 | 0d |
| A1640 |  | Rough-in inspection, level 2 |  | 2d | 2026-07-08 | 2026-07-10 | A1600 |  |  | 2026-07-05 | 2026-07-07 | 45d |
| A1620 |  | MEP rough-in, level 4 |  | 15d | 2026-07-23 | 2026-08-07 | A1340, A1610 |  |  | 2026-07-20 | 2026-08-04 | 0d |
| A1650 |  | Rough-in inspection, level 3 |  | 2d | 2026-07-23 | 2026-07-25 | A1610 |  |  | 2026-07-20 | 2026-07-22 | 30d |
| A1630 |  | MEP rough-in, level 5 |  | 15d | 2026-08-07 | 2026-08-22 | A1350, A1620 |  |  | 2026-08-04 | 2026-08-19 | 0d |
| A1660 |  | Rough-in inspection, level 4 |  | 2d | 2026-08-07 | 2026-08-09 | A1620 |  |  | 2026-08-04 | 2026-08-06 | 15d |
| A1670 |  | Rough-in inspection, level 5 |  | 2d | 2026-08-22 | 2026-08-24 | A1630 |  |  | 2026-08-19 | 2026-08-21 | 0d |
|  | PRECONSTRUCT | **Preconstruction** |  |  | 2026-03-02 | 2026-03-10 |  |  |  |  |  |  |
| A1000 |  | Notice to proceed | milestone | 0d | 2026-03-02 A | 2026-03-02 A |  | 100% |  |  |  |  |
| A1010 |  | Building permit issued |  | 3d | 2026-03-02 A | 2026-03-05 A | A1000 | 100% |  |  |  |  |
| A1020 |  | Mobilize site |  | 5d | 2026-03-05 A | 2026-03-10 A | A1010 | 100% |  |  |  |  |
|  | SITEWORK | **Sitework** |  |  | 2026-03-10 | 2026-04-06 |  |  |  |  |  |  |
| A1100 |  | Clear and grub |  | 4d | 2026-03-10 A | 2026-03-14 A | A1020 | 100% |  |  |  |  |
| A1110 |  | Excavation and shoring |  | 12d | 2026-03-14 A | 2026-04-01 A | A1100 | 100% |  | 2026-03-14 | 2026-03-26 |  |
| A1120 |  | Underground utilities |  | 10d | 2026-03-19 A | 2026-03-29 A | A1110 SS+5d | 100% |  |  |  |  |
| A1130 |  | Building pad and compaction |  | 5d | 2026-04-01 | 2026-04-06 | A1110, A1120 |  |  | 2026-03-29 | 2026-04-03 | 0d |

| ID | WBS | Activity | Duration | Start | Finish | Predecessors | Planned start | Planned finish | Total float |
| --- | --- | --- | --- | --- | --- | --- | --- | --- | --- |
|  | STRUCTURE | **Structure** |  | 2026-05-05 | 2026-07-25 |  |  |  |  |
| A1300 |  | Podium deck, level 1 | 15d | 2026-05-05 | 2026-05-20 | A1230 | 2026-05-02 | 2026-05-17 | 0d |
| A1310 |  | Frame level 2 | 12d | 2026-05-20 | 2026-06-01 | A1300 | 2026-05-17 | 2026-05-29 | 0d |
| A1320 |  | Frame level 3 | 12d | 2026-06-01 | 2026-06-13 | A1310 | 2026-05-29 | 2026-06-10 | 0d |
| A1330 |  | Frame level 4 | 12d | 2026-06-13 | 2026-06-25 | A1320 | 2026-06-10 | 2026-06-22 | 13d |
| A1340 |  | Frame level 5 | 12d | 2026-06-25 | 2026-07-07 | A1330 | 2026-06-22 | 2026-07-04 | 16d |
| A1350 |  | Roof framing | 8d | 2026-07-07 | 2026-07-15 | A1340 | 2026-07-04 | 2026-07-12 | 23d |
| A1360 |  | Roofing | 10d | 2026-07-15 | 2026-07-25 | A1350 | 2026-07-12 | 2026-07-22 | 66d |
